# SAD_G6_1.0.1

Schedule from MS Project, 2018-02-22 to 2018-07-24, 7 hours a day, costs in $, A marks actual dates.

## Calendars

- Copy of Copy of Standard: Mon-Fri 08:00-12:00, 13:00-17:00; Sat-Sun off. Exceptions (off unless hours are given): 2017-12-01 to 2019-04-03 13:00-18:00 (work, recurring), 2017-12-01 to 2019-05-16 20:00-21:00 (norm, recurring), 2018-03-15 to 2018-03-27 08:00-23:00 (holiday).

## Resources

| Resource | Rate | Notes |
| --- | --- | --- |
| Unassigned |  |  |
| درنا | 3 | توضی درآمدهای مختلف: / A -> Developer / B -> Analst |
| پگاه | 3 | توضی درآمدها: / A -> Developer / B -> Project Manager |
| معین | 3 | توضی درآمدها: / A -> Developer / B -> Designer |

## Schedule

| ID | WBS | Task | Type | Duration | Start | Finish | Predecessors | Complete | Remaining | Total slack | Free slack | Constraint | Deadline | Resources | Work | Actual work | Cost | Actual cost | تاریخ شروع | تاریخ پایان |
| --- | --- | --- | --- | --- | --- | --- | --- | --- | --- | --- | --- | --- | --- | --- | --- | --- | --- | --- | --- | --- |
| 1 | 1 | **پروژه** |  | 59.19d | 2018-02-22 A | 2018-07-24 |  | 5% | 56.2d | -0.05d | 0d |  | 2018-06-28 |  | 690.46h | 33.04h | 2,162.1 | 119.23 |  |  |
| 2 | 1.1 | **فاز اوّل(تهیهٔ پروپوزال)** |  | 5.07d | 2018-02-22 A | 2018-03-05 |  | 99% | 0.08d |  |  |  |  |  | 33.54h | 33.04h | 121.08 | 119.23 |  |  |
| 3 | 1.1.1 | **نوشتن بخش‌ها** |  | 4.07d | 2018-02-22 A | 2018-03-14 |  | 98% | 0.07d | 0d |  |  |  |  | 28.54h | 28.04h | 102.58 | 100.73 |  |  |
| 4 | 1.1.1 | اهداف و توجیه |  | 0.5h | 2018-03-05 A | 2018-03-05 A |  | 100% |  |  |  |  |  | معین | 0.5h | 0.5h | 1.85 | 1.85 | 96/12/14 | 96/12/14 |
| 5 | 1.1.2 | معرفی و مفاد قرارداد |  | 4h | 2018-03-05 A | 2018-03-05 A |  | 100% |  |  |  |  |  | پگاه | 4h | 4h | 14.8 | 14.8 | 96/12/14 | 96/12/14 |
| 6 | 1.1.3 | **معرفی سیستم و توضیح تکنولوژی** |  | 0.29d | 2018-03-05 A | 2018-03-07 A |  | 100% |  |  |  |  |  |  | 15.25h | 15.25h | 56.43 | 56.43 |  |  |
| 7 | 1.1.3.1 | تهیه گزینه راه حل‌های تکنولوژی |  | 10h | 2018-03-05 A | 2018-03-06 A |  | 100% |  |  |  |  |  | معین | 10h | 10h | 37 | 37 | 96/12/14 | 96/12/15 |
| 8 | 1.1.3.2 | امکان سنجی گزینه ها |  | 5h | 2018-03-06 A | 2018-03-07 A | 7 | 100% |  |  |  |  |  | معین | 5h | 5h | 18.5 | 18.5 | 96/12/15 | 96/12/16 |
| 9 | 1.1.3.3 | انتخاب گزینه راه حل نهایی |  | 0.25h | 2018-03-07 A | 2018-03-07 A | 8 | 100% |  |  |  |  |  | معین | 0.25h | 0.25h | 0.93 | 0.93 | 96/12/16 | 96/12/16 |
| 10 | 1.1.4 | **پوشش نیازمندی‌های کارکردی و غیرکارکردی** |  | 1.14d | 2018-02-22 A | 2018-02-28 |  | 88% | 0.14d | 0.29d |  |  |  |  | 4h | 3.5h | 13.4 | 11.55 |  |  |
| 11 | 1.1.4.1 | نیازمندی‌های کارکردی |  | 2h | 2018-02-22 A | 2018-02-28 |  | 75% | 0.5h | 0.29d |  |  |  | پگاه | 2h | 1.5h | 7.4 | 5.55 | 96/12/3 | 96/12/9 |
| 12 | 1.1.4.2 | نیازمندی‌های غیرکارکردی |  | 2h | 2018-02-27 A | 2018-02-28 A |  | 100% |  |  |  |  |  | درنا | 2h | 2h | 6 | 6 | 96/12/8 | 96/12/9 |
| 13 | 1.1.5 | برآورد زمانی |  | 0.14d | 2018-02-22 A | 2018-02-25 A |  | 100% |  |  |  |  |  | درنا | 1h | 1h | 3.3 | 3.3 | 96/12/3 | 96/12/6 |
| 14 | 1.1.6 | برآوردمالی |  | 0.29d | 2018-03-04 A | 2018-03-06 A | 13 | 100% |  |  |  |  |  | درنا | 2h | 2h | 6.6 | 6.6 | 96/12/13 | 96/12/15 |
| 15 | 1.1.7 | مراحل اجرای پروژه |  | 0.15d | 2018-03-09 A | 2018-03-12 A | 14 | 100% |  |  |  |  |  | درنا | 1.04h | 1.04h | 3.43 | 3.43 | 96/12/18 | 96/12/21 |
| 16 | 1.1.8 | معرفی اعضای گروه |  | 0.25h | 2018-03-09 A | 2018-03-14 A |  | 100% |  |  |  |  |  | پگاه | 0.25h | 0.25h | 0.93 | 0.93 | 96/12/18 | 96/12/23 |
| 17 | 1.1.9 | بیان نمرات اضافی |  | 0.5h | 2018-03-09 A | 2018-03-14 A |  | 100% |  |  |  |  |  | معین | 0.5h | 0.5h | 1.85 | 1.85 | 96/12/18 | 96/12/23 |
| 18 | 1.2 | بازخوانی و تصحیح پروپوزال و آماده سازی نسخه نهایی |  | 5h | 2018-03-04 A | 2018-03-06 A |  | 100% |  |  |  |  |  | پگاه | 5h | 5h | 18.5 | 18.5 | 96/12/13 | 96/12/15 |
| 19 | 1.3 | ارسال نسخه نهایی | milestone | 0d | 2018-03-06 A | 2018-03-06 | 18 | 99% | 0d | -0.14d | 0d |  |  | پگاه |  |  |  |  | 96/12/15 | 96/12/15 |
| 20 | 1.2 | **فاز دوم(ساختار شکست کار)** |  | 5.64d | 2018-03-05 A | 2018-03-15 | 2 |  | 5.64d |  |  |  |  |  | 28.25h |  | 93.62 |  |  |  |
| 21 | 1.2.1 | **یادگیری** |  | 4.21d | 2018-03-05 A | 2018-03-10 |  |  | 4.21d |  |  |  |  |  | 8h |  | 24 |  |  |  |
| 22 | 1.2.1.1 | یادگیری گیت |  | 3h | 2018-03-05 A | 2018-03-07 |  |  | 3h | 36.82d | 1.43d |  |  | درنا; معین; پگاه | 4h |  | 12 |  | 96/12/14 | 96/12/16 |
| 23 | 1.2.1.2 | یادگیری کار با project libre |  | 4h | 2018-03-07 | 2018-03-07 |  |  |  | 28.9d | 1d | start no earlier than 2018-03-07 |  | پگاه | 4h |  | 12 |  | 96/12/16 | 96/12/16 |
| 24 | 1.2.2 | **اجرا** |  | 10.29d | 2018-03-14 | 2018-03-19 |  |  |  | 25.14d |  |  |  |  | 20.25h |  | 69.62 |  |  |  |
| 25 | 1.2.2.1 | ساخت ریپازیتوری گیت |  | 0.25h | 2018-03-14 | 2018-03-14 | 22 |  |  | 35.39d |  | start no earlier than 2018-03-10 |  | پگاه | 0.25h |  | 0.75 |  | 96/12/23 | 96/12/23 |

| ID | WBS | Task | Duration | Start | Finish | Predecessors | Total slack | Free slack | Constraint | Deadline | Resources | Work | Cost | تاریخ شروع | تاریخ پایان |
| --- | --- | --- | --- | --- | --- | --- | --- | --- | --- | --- | --- | --- | --- | --- | --- |
| 26 | 1.2.2.2 | **ساخت wbs** | 10.29d | 2018-03-14 | 2018-03-19 |  | 25.14d |  |  |  |  | 20h | 68.87 |  |  |
| 27 | 1.2.2.2.1 | **مشخص کردن کارها و وظایف** | 6.81d | 2018-03-14 | 2018-03-17 |  | 26.76d |  |  |  |  | 14h | 50.87 |  |  |
| 28 | 1.2.2.2.1.1 | نوشتن کارها و وظایف | 12h | 2018-03-14 | 2018-03-15 | 23 | 28.76d | 0.86d |  |  | پگاه | 12h | 44.4 | 96/12/23 | 96/12/24 |
| 29 | 1.2.2.2.1.2 | ریویو | 1.33h | 2018-03-16 | 2018-03-17 | 28 | 26.76d | 2.48d |  |  | پگاه; درنا; معین | 2h | 6.47 | 96/12/25 | 96/12/26 |
| 30 | 1.2.2.2.2 | تمیزکاری و زیبا کردن | 2h | 2018-03-19 | 2018-03-19 | 29 | 24.29d | 0d |  |  | پگاه | 2h | 6 | 96/12/28 | 96/12/28 |
| 31 | 1.2.2.2.3 | اضافه کردن تقویم شمسی | 4h | 2018-03-19 | 2018-03-19 | 30 | 25.14d |  |  |  | معین | 4h | 12 | 96/12/28 | 96/12/28 |
| 32 | 1.3 | **فاز سوم و چهارم** | 30.29d | 2018-03-16 | 2018-04-16 | 20 | 16.57d |  |  |  |  | 196h | 649.4 |  |  |
| 33 | 1.3.1 | **یادگیری** | 17.71d | 2018-03-16 | 2018-03-24 |  | 29.14d |  |  |  |  | 56h | 184.8 |  |  |
| 34 | 1.3.1.1 | یادآوری درست نوشتن و کشیدن یوزکیس | 24h | 2018-03-19 | 2018-03-22 |  | 31.5d | 8.5d | start no earlier than 2018-03-19 |  | پگاه | 24h | 88.8 | 96/12/28 | 97/1/2 |
| 35 | 1.3.1.2 | یادگرفتن کار با ابزار وایرفریم درست کردن | 16h | 2018-03-17 | 2018-03-24 |  | 25.71d | 9.43d |  |  | درنا | 16h | 48 | 96/12/26 | 97/1/4 |
| 36 | 1.3.1.3 | یاد گرفتن سلنیوم | 16h | 2018-03-16 | 2018-03-19 |  | 39.14d |  |  |  | معین | 16h | 48 | 96/12/25 | 96/12/28 |
| 37 | 1.3.2 | **اجرا** | 30.29d | 2018-03-16 | 2018-04-16 |  | 16.57d |  |  |  |  | 140h | 464.6 |  |  |
| 38 | 1.3.2.1 | دقیق‌تر کردن نیازمندی‌های پروپوزال | 2h | 2018-03-16 | 2018-03-16 |  | 44.14d | 21.14d |  |  | پگاه | 2h | 7.4 | 96/12/25 | 96/12/25 |
| 39 | 1.3.2.2 | نوشتن یوزکیس‌ها | 60h | 2018-03-26 | 2018-04-04 | 38, 34 | 19.57d | 0.14d | start no earlier than 2018-03-24 |  | معین | 60h | 222 | 97/1/6 | 97/1/15 |
| 40 | 1.3.2.3 | درست کردن داک نیازمندی‌ها و یوزکیس‌ها | 4h | 2018-03-28 | 2018-03-30 | 39SS | 20d |  | start no earlier than 2018-03-28 |  | درنا | 4h | 13.2 | 97/1/8 | 97/1/10 |
| 41 | 1.3.2.4 | نوشتن سناریوهای تست | 24h | 2018-03-26 | 2018-03-29 | 39SS+0.57d | 20.43d |  |  |  | پگاه | 24h | 72 | 97/1/6 | 97/1/9 |
| 42 | 1.3.2.5 | **پیاده‌سازی وایرفریم** | 3.14d | 2018-04-03 | 2018-04-16 |  | 16.29d |  |  |  |  | 50h | 150 |  |  |
| 43 | 1.3.2.5.1 | طراحی | 30h | 2018-04-03 | 2018-04-06 | 35 | 16.86d | 0d | start no earlier than 2018-04-03 |  | پگاه | 30h | 90 | 97/1/14 | 97/1/17 |
| 44 | 1.3.2.5.2 | پیاده‌سازی | 20h | 2018-04-03 | 2018-04-16 | 43SS | 16.29d |  | start no earlier than 2018-02-22 |  | درنا | 20h | 60 | 97/1/14 | 97/1/27 |
| 45 | 1.4 | **فاز پنجم(پیاده‌سازی و تست)** | 52.33d | 2018-03-16 | 2018-07-24 | 20 | -0.05d | 0d |  | 2018-06-28 |  | 432.67h | 1,298 |  |  |
| 46 | 1.4.1 | **یادگیری** | 35.5d | 2018-03-16 | 2018-05-09 |  | 8.36d |  |  |  |  | 72h | 216 |  |  |
| 47 | 1.4.1.1 | یادگیری جنگو | 64.5h | 2018-04-18 | 2018-05-09 |  | 4.86d | 1.57d | start no earlier than 2018-04-18 |  | درنا; پگاه | 70h | 210 | 97/1/29 | 97/2/19 |
| 48 | 1.4.1.2 | یادآوری postgres | 2h | 2018-03-16 | 2018-03-16 |  | 43.57d | 37.43d |  |  | معین | 2h | 6 | 96/12/25 | 96/12/25 |
| 49 | 1.4.2 | **اجرا** | 16.5d | 2018-05-15 | 2018-07-13 |  |  |  |  |  |  | 302h | 906 |  |  |
| 50 | 1.4.2.1 | **اجرای سمت سرور** | 6.14d | 2018-05-15 | 2018-06-11 |  | 1.57d |  |  |  |  | 161h | 483 |  |  |
| 51 | 1.4.2.1.1 | **طراحی ER** | 0.71d | 2018-05-15 | 2018-05-16 | 47SS+4.57d | 1.57d |  |  |  |  | 15h | 45 |  |  |
| 52 | 1.4.2.1.1.1 | طراحی اوّلیه | 14h | 2018-05-15 | 2018-05-16 |  | 3.29d | 0d |  |  | درنا; معین | 14h | 42 | 97/2/25 | 97/2/26 |
| 53 | 1.4.2.1.1.2 | بازبینی | 1h | 2018-05-16 | 2018-05-16 | 52 | 8.71d | 0.43d |  |  | پگاه | 1h | 3 | 97/2/26 | 97/2/26 |

| ID | WBS | Task | Duration | Start | Finish | Predecessors | Total slack | Free slack | Constraint | Resources | Work | Cost | تاریخ شروع | تاریخ پایان |
| --- | --- | --- | --- | --- | --- | --- | --- | --- | --- | --- | --- | --- | --- | --- |
| 54 | 1.4.2.1.2 | **پیاده‌سازی پایگاه داده** | 0.57d | 2018-05-19 | 2018-05-23 | 53, 48 | 6.29d |  |  |  | 6h | 18 |  |  |
| 55 | 1.4.2.1.2.1 | پیاده‌سازی اوّلیه | 5h | 2018-05-19 | 2018-05-23 |  | 8.14d | 0d |  | درنا | 5h | 15 | 97/2/29 | 97/3/2 |
| 56 | 1.4.2.1.2.2 | نرمال‌سازی روابط | 1h | 2018-05-23 | 2018-05-23 | 55 | 8.14d |  |  | درنا | 1h | 3 | 97/3/2 | 97/3/2 |
| 57 | 1.4.2.1.3 | پیاده‌سازی کد پایتون | 140h | 2018-05-16 | 2018-06-11 | 52 | 4.14d |  |  | معین | 140h | 420 | 97/2/26 | 97/3/21 |
| 58 | 1.4.2.2 | **اجرای سمت کاربر** | 6.95d | 2018-06-12 | 2018-07-04 |  |  |  |  |  | 127h | 381 |  |  |
| 59 | 1.4.2.2.1 | طراحی ui | 40h | 2018-06-12 | 2018-06-19 |  | 0d |  | as late as possible | پگاه | 40h | 120 | 97/3/22 | 97/3/29 |
| 60 | 1.4.2.2.2 | یادگیری بستر مناسب پیاده‌سازی ui | 15h | 2018-06-15 | 2018-06-19 |  | 0d |  | as late as possible | معین | 15h | 45 | 97/3/25 | 97/3/29 |
| 61 | 1.4.2.2.3 | پیاده‌سازی ui | 42h | 2018-06-19 | 2018-07-04 | 60, 59 | -3.19d | 0d | as late as possible | درنا; معین; پگاه | 72h | 216 | 97/3/29 | 97/4/13 |
| 62 | 1.4.2.3 | دیپلوی آزمایشی | 14h | 2018-07-12 | 2018-07-13 |  | 19.43d |  | start no earlier than 2018-07-12 | معین | 14h | 42 | 97/4/21 | 97/4/22 |
| 63 | 1.4.3 | **تست کار دیپلوی‌شده** | 2.05d | 2018-07-14 | 2018-07-24 | 49 | -5.71d | 0d |  |  | 58.67h | 176 |  |  |
| 64 | 1.4.3.1 | تست | 26.67h | 2018-07-14 | 2018-07-24 |  | -5.76d | 0d | start no earlier than 2018-07-12 | درنا; پگاه | 26.67h | 80 | 97/4/23 | 97/5/2 |
| 65 | 1.4.3.2 | رفع اشکال | 32h | 2018-07-16 | 2018-07-19 | 64SS | -4.71d | 0d |  | معین | 32h | 96 | 97/4/25 | 97/4/28 |
